# WBS Detallado

How a schedule from MS Project changed from version to version. A marks actual dates.

## Version 1 (saved 2012-10-17)

Note of the change: AREA PP_PMC

| ID | WBS | Task | Duration | Start | Finish | Total float | Constraint |
| --- | --- | --- | --- | --- | --- | --- | --- |
| 1 | 1 | **SGTP** | 88d | 2012-09-03 | 2013-01-02 | 0d |  |
| 2 | 1.1 | **Iteracion 1** | 8d | 2012-09-03 | 2012-09-13 | 80d |  |
| 3 | 1.1.1 | **Planificación** | 2d | 2012-09-03 | 2012-09-05 | 86d |  |
| 4 |  | Plan de Proyecto | 1d | 2012-09-03 | 2012-09-03 | 87d | start no earlier than 2012-09-03 |
| 5 |  | Cronograma Detallado | 1d | 2012-09-03 | 2012-09-04 | 87d | finish no earlier than 2012-09-04 |
| 6 |  | Informe Semanal | 1d | 2012-09-03 | 2012-09-04 | 87d | finish no earlier than 2012-09-04 |
| 7 |  | Actas de Reuniones | 1d | 2012-09-04 | 2012-09-05 | 86d | finish no earlier than 2012-09-05 |
| 8 | 1.1.2 | **Analisis de Riesgos** | 1d | 2012-09-05 | 2012-09-06 | 85d |  |
| 9 |  | Registro de Riesgos | 1d | 2012-09-05 | 2012-09-06 | 85d | finish no earlier than 2012-09-06 |
| 10 | 1.1.3 | **Ingeniería** | 3d | 2012-09-07 | 2012-09-11 | 81d |  |
| 11 |  | Modelaje Base de Datos | 2d | 2012-09-07 | 2012-09-11 | 82d | finish no earlier than 2012-09-11 |
| 12 |  | Desarrollo de Interfaces | 3d | 2012-09-07 | 2012-09-11 | 81d | finish no earlier than 2012-09-11 |
| 13 | 1.1.4 | **Evaluación del Cliente** | 1d | 2012-09-12 | 2012-09-13 | 80d |  |
| 14 |  | Kick Off Metting Interno | 1d | 2012-09-12 | 2012-09-12 | 80d | start no earlier than 2012-09-12 |
| 15 |  | Kick Off Metting Externo | 1d | 2012-09-12 | 2012-09-13 | 80d | finish no earlier than 2012-09-13 |
| 16 |  | Acta de Aceptacion de Entregables | 1d | 2012-09-12 | 2012-09-13 | 80d | finish no earlier than 2012-09-13 |
| 17 | 1.2 | **Iteracion 2** | 18d | 2012-09-14 | 2012-10-09 | 61d |  |
| 18 | 1.2.1 | **Planificación** | 2d | 2012-09-14 | 2012-09-18 | 77d |  |
| 19 |  | Documentos de Arquitectura de Software | 1d | 2012-09-14 | 2012-09-14 | 78d | start no earlier than 2012-09-14 |
| 20 |  | Casos de Uso | 1d | 2012-09-14 | 2012-09-15 | 78d | finish no earlier than 2012-09-15 |
| 21 |  | Diagrama de Casos de Uso | 1d | 2012-09-14 | 2012-09-15 | 78d | finish no earlier than 2012-09-15 |
| 22 |  | Lista Maestra de Requerimientos | 1d | 2012-09-14 | 2012-09-16 | 78d | finish no earlier than 2012-09-16 |
| 23 |  | Matriz de Trazabilidad | 1d | 2012-09-14 | 2012-09-16 | 78d | finish no earlier than 2012-09-16 |
| 24 |  | Informe Semanal | 1d | 2012-09-14 | 2012-09-17 | 78d | finish no earlier than 2012-09-17 |
| 25 |  | Actas de Reuniones | 1d | 2012-09-17 | 2012-09-18 | 77d | finish no earlier than 2012-09-18 |
| 26 | 1.2.2 | **Análisis de Riesgos** | 2d | 2012-09-19 | 2012-09-20 | 74d |  |
| 27 |  | Registros de Riesgos | 2d | 2012-09-19 | 2012-09-20 | 74d | finish no earlier than 2012-09-20 |
| 28 | 1.2.3 | **Ingeniería** | 11d | 2012-09-21 | 2012-10-05 | 63d |  |
| 29 |  | Desarrollo de Logica de Negocio | 11d | 2012-09-21 | 2012-10-05 | 63d | finish no earlier than 2012-10-05 |
| 30 | 1.2.4 | **Evaluación del Cliente** | 2d | 2012-10-08 | 2012-10-09 | 61d |  |
| 31 |  | Acta de Aceptacion de Entregables | 2d | 2012-10-08 | 2012-10-09 | 61d | finish no earlier than 2012-10-09 |
| 32 | 1.3 | **Iteración 3** | 25d | 2012-10-10 | 2012-11-13 | 36d |  |
| 33 | 1.3.1 | **Planificación** | 2d | 2012-10-10 | 2012-10-12 | 59d |  |
| 34 |  | Casos de Uso | 1d | 2012-10-10 | 2012-10-10 | 60d | start no earlier than 2012-10-10 |
| 35 |  | Diagrama de Casos de Uso | 1d | 2012-10-10 | 2012-10-11 | 60d | finish no earlier than 2012-10-11 |
| 36 |  | Lista Maestra de Requerimientos Actualizada | 1d | 2012-10-10 | 2012-10-11 | 60d | finish no earlier than 2012-10-11 |
| 37 |  | Matriz de Trazabilidad Actualizada | 1d | 2012-10-11 | 2012-10-12 | 59d | finish no earlier than 2012-10-12 |
| 38 | 1.3.2 | **Análisis de Riesgos** | 3d | 2012-10-15 | 2012-10-17 | 55d |  |
| 39 |  | Registros de Riesgos | 1d | 2012-10-15 | 2012-10-16 | 57d | finish no earlier than 2012-10-16 |
| 40 |  | Planes de Prueba | 2d | 2012-10-16 | 2012-10-17 | 55d | finish no earlier than 2012-10-17 |
| 41 | 1.3.3 | **Ingeniería** | 16d | 2012-10-18 | 2012-11-08 | 39d |  |
| 42 |  | Desarrollo de Persistencia | 16d | 2012-10-18 | 2012-11-08 | 39d | finish no earlier than 2012-11-08 |
| 43 | 1.3.4 | **Evaluación del Cliente** | 4d | 2012-11-08 | 2012-11-13 | 36d |  |
| 44 |  | Acta de Aceptacion de Entregables | 1d | 2012-11-08 | 2012-11-09 | 39d | finish no earlier than 2012-11-09 |
| 45 |  | Pruebas Funcionales | 3d | 2012-11-09 | 2012-11-13 | 36d | finish no earlier than 2012-11-13 |
| 46 | 1.4 | **Iteración 4** | 36d | 2012-11-14 | 2013-01-02 | 0d |  |
| 47 | 1.4.1 | **Planificación** | 3d | 2012-11-14 | 2012-11-16 | 33d |  |
| 48 |  | Manual de Usuario | 1d | 2012-11-14 | 2012-11-15 | 35d | finish no earlier than 2012-11-15 |
| 49 |  | Informe Semanal | 1d | 2012-11-14 | 2012-11-15 | 35d | finish no earlier than 2012-11-15 |
| 50 |  | Actas de Reuniones | 2d | 2012-11-15 | 2012-11-16 | 33d | finish no earlier than 2012-11-16 |
| 51 | 1.4.2 | **Análisis de Riesgos** | 5d | 2012-11-19 | 2012-11-23 | 28d |  |
| 52 |  | Registro de Riesgos | 1d | 2012-11-19 | 2012-11-19 | 32d | start no earlier than 2012-11-19 |
| 53 |  | Plan de Capacitación | 5d | 2012-11-19 | 2012-11-23 | 28d | finish no earlier than 2012-11-23 |
| 54 | 1.4.3 | **Ingeniería** | 20d | 2012-11-26 | 2012-12-21 | 8d |  |
| 55 |  | Pruebas Unitarias | 4d | 2012-11-26 | 2012-11-30 | 24d | finish no earlier than 2012-11-30 |
| 56 |  | Pruebas Integrales | 5d | 2012-12-03 | 2012-12-10 | 18d | finish no earlier than 2012-12-10 |
| 57 |  | Pruebas en Producción | 6d | 2012-12-10 | 2012-12-18 | 12d | finish no earlier than 2012-12-18 |
| 58 |  | Implementación | 4d | 2012-12-18 | 2012-12-21 | 8d | finish no earlier than 2012-12-21 |
| 59 | 1.4.4 | **Evaluación del Cliente** | 8d | 2012-12-24 | 2013-01-02 | 0d |  |
| 60 |  | Acta de Conformidad de Capacitacion | 1d | 2012-12-24 | 2012-12-24 | 7d | start no earlier than 2012-12-24 |
| 61 |  | Soporte | 6d | 2012-12-24 | 2013-01-01 | 2d | finish no earlier than 2013-01-01 |
| 62 |  | Acta de Finalización del Proyecto | 2d | 2013-01-01 | 2013-01-02 | 0d | finish no earlier than 2013-01-02 |

## Version 2 (saved 2012-12-05)

Note of the change: AREA PP_PMC

Last finish stays 2013-01-02. Complete tasks 0 → 23.

Changed:

| ID | Task | Start | Finish | Complete | Total float |
| --- | --- | --- | --- | --- | --- |
| 1 | **SGTP** | 2012-09-03 A |  | 0% → 60% |  |
| 2 | **Iteracion 1** | 2012-09-03 A |  | 0% → 92% |  |
| 3 | **Planificación** | 2012-09-03 A |  | 0% → 98% |  |
| 4 | Plan de Proyecto | 2012-09-03 A | 2012-09-03 A | 0% → 100% | 87d → none |
| 5 | Cronograma Detallado | 2012-09-03 A |  | 0% → 90% |  |
| 6 | Informe Semanal | 2012-09-03 A | 2012-09-04 A | 0% → 100% | 87d → none |
| 7 | Actas de Reuniones | 2012-09-04 A | 2012-09-05 A | 0% → 100% | 86d → none |
| 8 | **Analisis de Riesgos** | 2012-09-05 A | 2012-09-06 A | 0% → 100% | 85d → none |
| 9 | Registro de Riesgos | 2012-09-05 A | 2012-09-06 A | 0% → 100% | 85d → none |
| 10 | **Ingeniería** | 2012-09-07 A | 2012-09-11 A | 0% → 100% | 81d → none |
| 11 | Modelaje Base de Datos | 2012-09-07 A | 2012-09-11 A | 0% → 100% | 82d → none |
| 12 | Desarrollo de Interfaces | 2012-09-07 A | 2012-09-11 A | 0% → 100% | 81d → none |
| 13 | **Evaluación del Cliente** | 2012-09-12 A |  | 0% → 67% |  |
| 14 | Kick Off Metting Interno | 2012-09-12 A | 2012-09-12 A | 0% → 100% | 80d → none |
| 15 | Kick Off Metting Externo | 2012-09-12 A | 2012-09-13 A | 0% → 100% | 80d → none |
| 17 | **Iteracion 2** | 2012-09-14 A |  | 0% → 77% |  |
| 18 | **Planificación** | 2012-09-14 A |  | 0% → 57% |  |
| 22 | Lista Maestra de Requerimientos | 2012-09-14 A | 2012-09-16 A | 0% → 100% | 78d → none |
| 23 | Matriz de Trazabilidad | 2012-09-14 A | 2012-09-16 A | 0% → 100% | 78d → none |
| 24 | Informe Semanal | 2012-09-14 A | 2012-09-17 A | 0% → 100% | 78d → none |
| 25 | Actas de Reuniones | 2012-09-17 A | 2012-09-18 A | 0% → 100% | 77d → none |
| 26 | **Análisis de Riesgos** | 2012-09-19 A | 2012-09-20 A | 0% → 100% | 74d → none |
| 27 | Registros de Riesgos | 2012-09-19 A | 2012-09-20 A | 0% → 100% | 74d → none |
| 28 | **Ingeniería** | 2012-09-21 A | 2012-10-05 A | 0% → 100% | 63d → none |
| 29 | Desarrollo de Logica de Negocio | 2012-09-21 A | 2012-10-05 A | 0% → 100% | 63d → none |
| 32 | **Iteración 3** | 2012-10-10 A |  | 0% → 83% |  |
| 33 | **Planificación** | 2012-10-10 A |  | 0% → 50% |  |
| 36 | Lista Maestra de Requerimientos Actualizada | 2012-10-10 A | 2012-10-11 A | 0% → 100% | 60d → none |
| 37 | Matriz de Trazabilidad Actualizada | 2012-10-11 A | 2012-10-12 A | 0% → 100% | 59d → none |
| 38 | **Análisis de Riesgos** | 2012-10-15 A | 2012-10-17 A | 0% → 100% | 55d → none |
| 39 | Registros de Riesgos | 2012-10-15 A | 2012-10-16 A | 0% → 100% | 57d → none |
| 40 | Planes de Prueba | 2012-10-16 A | 2012-10-17 A | 0% → 100% | 55d → none |
| 41 | **Ingeniería** | 2012-10-18 A | 2012-11-08 A | 0% → 100% | 39d → none |
| 42 | Desarrollo de Persistencia | 2012-10-18 A | 2012-11-08 A | 0% → 100% | 39d → none |
| 43 | **Evaluación del Cliente** | 2012-11-08 A |  | 0% → 38% |  |
| 45 | Pruebas Funcionales | 2012-11-09 A |  | 0% → 50% |  |
| 46 | **Iteración 4** | 2012-11-14 A |  | 0% → 24% |  |
| 47 | **Planificación** | 2012-11-14 A |  | 0% → 75% |  |
| 49 | Informe Semanal | 2012-11-14 A | 2012-11-15 A | 0% → 100% | 35d → none |
| 50 | Actas de Reuniones | 2012-11-15 A | 2012-11-16 A | 0% → 100% | 33d → none |
| 51 | **Análisis de Riesgos** | 2012-11-19 A | 2012-11-23 A | 0% → 100% | 28d → none |
| 52 | Registro de Riesgos | 2012-11-19 A | 2012-11-19 A | 0% → 100% | 32d → none |
| 53 | Plan de Capacitación | 2012-11-19 A | 2012-11-23 A | 0% → 100% | 28d → none |

## Version 3 (saved 2012-12-10)

Note of the change: ARA AAE, AREA PP_PMC, AREA_DESARROLLO, AREA_ASE, AREA_ASI

Last finish stays 2013-01-02. Complete tasks 23 → 28.

Changed:

| ID | Task | Start | Finish | Complete | Total float | Other |
| --- | --- | --- | --- | --- | --- | --- |
| 1 | **SGTP** |  |  | 60% → 78% |  |  |
| 2 | **Iteracion 1** |  | 2012-09-13 A | 92% → 100% | 80d → none |  |
| 3 | **Planificación** |  | 2012-09-05 A | 98% → 100% | 86d → none |  |
| 5 | Cronograma Detallado |  | 2012-09-04 A | 90% → 100% | 87d → none |  |
| 12 | Desarrollo de Prototipos Interfaces |  |  |  |  | was named Desarrollo de Interfaces |
| 13 | **Evaluación del Cliente** |  | 2012-09-13 A | 67% → 100% | 80d → none |  |
| 16 | Acta de Aceptacion de Entregables | 2012-09-12 A | 2012-09-13 A | 0% → 100% | 80d → none |  |
| 32 | **Iteración 3** |  |  | 83% → 89% |  |  |
| 43 | **Evaluación del Cliente** |  |  | 38% → 75% |  |  |
| 45 | Pruebas Funcionales |  | 2012-11-13 A | 50% → 100% | 36d → none |  |
| 46 | **Iteración 4** |  |  | 24% → 64% |  |  |
| 54 | **Ingeniería** | 2012-11-26 A |  | 0% → 81% |  |  |
| 55 | Pruebas Unitarias | 2012-11-26 A | 2012-11-30 A | 0% → 100% | 24d → none |  |
| 56 | Pruebas Integrales | 2012-12-03 A |  | 0% → 50% |  |  |
| 57 | Pruebas en Producción | 2012-12-10 A |  | 0% → 80% |  |  |
| 58 | Implementación | 2012-12-18 A | 2012-12-21 A | 0% → 100% | 8d → none |  |

## Version 4 (saved 2012-12-11)

Note of the change: AREA DEV

Last finish stays 2013-01-02. Complete tasks 28 → 35.

Changed:

| ID | Task | Start | Finish | Complete | Total float |
| --- | --- | --- | --- | --- | --- |
| 1 | **SGTP** |  |  | 78% → 86% |  |
| 17 | **Iteracion 2** |  | 2012-10-09 A | 77% → 100% | 61d → none |
| 18 | **Planificación** |  | 2012-09-18 A | 57% → 100% | 77d → none |
| 19 | Documentos de Arquitectura de Software | 2012-09-14 A | 2012-09-14 A | 0% → 100% | 78d → none |
| 20 | Casos de Uso | 2012-09-14 A | 2012-09-15 A | 0% → 100% | 78d → none |
| 21 | Diagrama de Casos de Uso | 2012-09-14 A | 2012-09-15 A | 0% → 100% | 78d → none |
| 30 | **Evaluación del Cliente** | 2012-10-08 A | 2012-10-09 A | 0% → 100% | 61d → none |
| 31 | Acta de Aceptacion de Entregables | 2012-10-08 A | 2012-10-09 A | 0% → 100% | 61d → none |
| 32 | **Iteración 3** |  | 2012-11-13 A | 89% → 100% | 36d → none |
| 33 | **Planificación** |  | 2012-10-12 A | 50% → 100% | 59d → none |
| 34 | Casos de Uso | 2012-10-10 A | 2012-10-10 A | 0% → 100% | 60d → none |
| 35 | Diagrama de Casos de Uso | 2012-10-10 A | 2012-10-11 A | 0% → 100% | 60d → none |
| 43 | **Evaluación del Cliente** |  | 2012-11-13 A | 75% → 100% | 36d → none |
| 44 | Acta de Aceptacion de Entregables | 2012-11-08 A | 2012-11-09 A | 0% → 100% | 39d → none |
| 47 | **Planificación** |  |  | 75% → 78% |  |
| 48 | Manual de Usuario | 2012-11-14 A |  | 0% → 10% |  |

## Version 5 (saved 2012-12-16)

Note of the change: Area PP_MC

Last finish 2013-01-02 → 2012-12-18 (-15d). Complete tasks 35 → 40.

Changed:

| ID | Task | Start | Finish | Duration | Complete | Total float | Other |
| --- | --- | --- | --- | --- | --- | --- | --- |
| 1 | **SGTP** |  | 2013-01-02 → 2012-12-18 (-15d) | 88d → 77d | 86% → 99% |  |  |
| 46 | **Iteración 4** |  | 2013-01-02 → 2012-12-18 (-15d) | 36d → 25d | 64% → 96% |  |  |
| 47 | **Planificación** |  | 2012-11-16 A |  | 78% → 100% | 33d → none |  |
| 48 | Manual de Usuario |  | 2012-11-15 A |  | 10% → 100% | 35d → none |  |
| 54 | **Ingeniería** |  | 2012-12-21 → 2012-12-11 A (-10d) | 20d → 12d | 81% → 100% | 8d → none |  |
| 56 | Pruebas Integrales |  | 2012-12-10 → 2012-12-05 A (-5d) | 5d → 3d | 50% → 100% | 18d → none | constraint finish no earlier than 2012-12-10 → finish no earlier than 2012-12-05 |
| 57 | Pruebas en Producción | 2012-12-10 A → 2012-12-06 A (-4d) | 2012-12-18 → 2012-12-07 A (-11d) | 6d → 2d | 80% → 100% | 12d → none | constraint finish no earlier than 2012-12-18 → finish no earlier than 2012-12-07 |
| 58 | Implementación | 2012-12-18 A → 2012-12-10 A (-8d) | 2012-12-21 A → 2012-12-11 A (-10d) | 4d → 2d |  |  |  |
| 59 | **Evaluación del Cliente** | 2012-12-24 → 2012-12-12 A (-12d) | 2013-01-02 → 2012-12-18 (-15d) | 8d → 5d | 0% → 80% | 0d → none |  |
| 60 | Acta de Conformidad de Capacitacion | 2012-12-24 → 2012-12-12 A (-12d) | 2012-12-24 → 2012-12-12 A (-12d) |  | 0% → 100% | 7d → none | constraint start no earlier than 2012-12-24 → finish no earlier than 2012-12-12 |
| 61 | Soporte | 2012-12-24 → 2012-12-13 A (-11d) | 2013-01-01 → 2012-12-17 A (-15d) | 6d → 3d | 0% → 100% | 2d → none | constraint finish no earlier than 2013-01-01 → finish no earlier than 2012-12-24 |
| 62 | Acta de Finalización del Proyecto | 2013-01-01 → 2012-12-18 (-14d) | 2013-01-02 → 2012-12-18 (-15d) | 2d → 1d |  |  | constraint finish no earlier than 2013-01-02 → finish no earlier than 2012-12-18 |

## Version 6 (saved 2012-12-18)

Note of the change: Area PP_PMC

Last finish stays 2012-12-18. Complete tasks 40 → 38.

Changed:

| ID | Task | Start | Finish | Complete | Total float |
| --- | --- | --- | --- | --- | --- |
| 1 | **SGTP** |  |  | 99% → 94% |  |
| 46 | **Iteración 4** |  |  | 96% → 81% |  |
| 59 | **Evaluación del Cliente** | 2012-12-12 A → 2012-12-12 |  | 80% → 0% |  |
| 60 | Acta de Conformidad de Capacitacion | 2012-12-12 A → 2012-12-12 | 2012-12-12 A → 2012-12-12 | 100% → 0% | none → 4d |
| 61 | Soporte | 2012-12-13 A → 2012-12-13 | 2012-12-17 A → 2012-12-17 | 100% → 0% |  |
